# caAERS-ProjectSchedule-JanuaryUpdate

Schedule from MS Project, 2006-12-01 to 2007-09-26, A marks actual dates.

## Calendars

- Standard: Mon-Fri 08:00-12:00, 13:00-17:00; Sat-Sun off. Exceptions (off unless hours are given): 2006-12-25, 2007-01-01.

## Resources

| Resource |
| --- |
| Warren |
| Cal |
| Renee |
| Rhett |
| Vinay |
| Joshua |
| Padmaja |
| Richard |
| Krikor |
| John |
| Ram |
| Sujith |
| David |
| Brenda |
| Natasha |
| Mayo |
| WF |
| AE_SIG |
| VCDE_WS |
| Arch_WS |
| Edmond |
| Functional Team Lead |
| Dave |
| CCB |
| Sean |

## Schedule

| ID | WBS | Task | Type | Duration | Start | Finish | Predecessors | Complete | Remaining | Baseline start | Baseline finish | Baseline duration | Total slack | Constraint | Resources | Work | Actual work | Text1 |
| --- | --- | --- | --- | --- | --- | --- | --- | --- | --- | --- | --- | --- | --- | --- | --- | --- | --- | --- |
| 1 | 1 | **caAERS Application Development Project** |  | 212d? | 2006-12-01 A | 2007-09-26 |  | 32% | 143.73d? | 2006-12-01 | 2007-09-26 | 212d | 0d |  |  | 11184.2h | 7994.06h |  |
| 2 | 1.1 | **Elaboration Phase** |  | 43d? | 2006-12-01 A | 2007-02-01 |  | 72% | 12.07d? | 2006-12-01 | 2007-02-01 | 43d | 169d |  |  | 11184.2h | 7994.06h |  |
| 3 | 1.1.1 | **Iteration 1** |  | 21d | 2006-12-01 A | 2007-01-02 |  | 94% | 1.31d | 2006-12-01 | 2007-01-03 | 22d | 191d |  |  | 7896.24h | 7022.06h |  |
| 4 | 1.1.1.1 | **Project Management** |  | 20d | 2006-12-01 A | 2006-12-29 A |  | 100% |  | 2006-12-01 | 2007-01-03 | 22d |  |  |  | 2512h | 2512h |  |
| 5 | 1.1.1.1.1 | **Inception and Kickoff Planning** |  | 6d | 2006-12-01 A | 2006-12-08 A |  | 100% |  | 2006-12-01 | 2006-12-08 | 6d |  |  |  | 200h | 200h |  |
| 6 | 1.1.1.1.1.1 | Draft Project Management Plan |  | 3d | 2006-12-01 A | 2006-12-05 A |  | 100% |  | 2006-12-01 | 2006-12-05 | 3d |  |  | Edmond; Ram; Vinay | 72h | 72h |  |
| 7 | 1.1.1.1.1.2 | High-Level Schedule and Assignments |  | 3d | 2006-12-01 A | 2006-12-05 A |  | 100% |  | 2006-12-01 | 2006-12-05 | 3d |  |  | Edmond; Ram; Vinay | 72h | 72h | GANTT |
| 8 | 1.1.1.1.1.3 | Kickoff Meeting | milestone | 1d | 2006-12-06 A | 2006-12-06 A |  | 100% |  | 2006-12-06 | 2006-12-06 | 1d |  | start no earlier than 2006-12-06 | Edmond; Ram; Vinay; Warren; Renee; Cal | 48h | 48h |  |
| 9 | 1.1.1.1.1.4 | Kickoff Meeting Notes (Task 1.5) |  | 1d | 2006-12-08 A | 2006-12-08 A | 8FS+1d | 100% |  | 2006-12-08 | 2006-12-08 | 1d |  |  | Edmond | 8h | 8h | Kickoff Minutes |
| 10 | 1.1.1.1.2 | **Project Management Plan Baseline (Task 1.1)** |  | 11d | 2006-12-11 A | 2006-12-26 A |  | 100% |  | 2006-12-11 | 2006-12-26 | 11d |  |  |  | 296h | 296h |  |
| 11 | 1.1.1.1.2.1 | Add Details for Elaboration Phase to Project Plan |  | 3d | 2006-12-11 A | 2006-12-13 A | 9 | 100% |  | 2006-12-11 | 2006-12-13 | 3d |  |  | Edmond; Ram; Vinay | 72h | 72h |  |
| 12 | 1.1.1.1.2.2 | Resource Load and Level Project Schedule for Elaboration Phase |  | 1d | 2006-12-14 A | 2006-12-14 A | 11 | 100% |  | 2006-12-14 | 2006-12-14 | 1d |  |  | Edmond | 8h | 8h |  |
| 13 | 1.1.1.1.2.3 | Adopters/Collaborators Review |  | 5d | 2006-12-15 A | 2006-12-21 A | 12 | 100% |  | 2006-12-15 | 2006-12-21 | 5d |  |  | Mayo; WF; AE_SIG; VCDE_WS; Arch_WS | 200h | 200h |  |
| 14 | 1.1.1.1.2.4 | Updates |  | 2d | 2006-12-22 A | 2006-12-26 A | 13 | 100% |  | 2006-12-22 | 2006-12-26 | 2d |  |  | Edmond | 16h | 16h |  |
| 15 | 1.1.1.1.2.5 | Submit to BAH | milestone | 0d | 2006-12-26 A | 2006-12-26 A | 14 | 100% |  | 2006-12-26 | 2006-12-26 | 0d |  |  | Edmond |  |  |  |
| 16 | 1.1.1.1.3 | **Communications Plan (Task 1.2)** |  | 11d | 2006-12-01 A | 2006-12-15 A |  | 100% |  | 2006-12-01 | 2006-12-15 | 11d |  |  |  | 368h | 368h |  |
| 17 | 1.1.1.1.3.1 | Developers Draft |  | 5d | 2006-12-01 A | 2006-12-07 A |  | 100% |  | 2006-12-01 | 2006-12-07 | 5d |  |  | Edmond; Ram; Warren; Cal | 160h | 160h |  |
| 18 | 1.1.1.1.3.2 | Adopters/Collaborators Review |  | 5d | 2006-12-08 A | 2006-12-14 A | 17 | 100% |  | 2006-12-08 | 2006-12-14 | 5d |  |  | Mayo; WF; AE_SIG; VCDE_WS; Arch_WS | 200h | 200h |  |
| 19 | 1.1.1.1.3.3 | Developers Update |  | 1d | 2006-12-15 A | 2006-12-15 A | 18 | 100% |  | 2006-12-15 | 2006-12-15 | 1d |  |  | Edmond | 8h | 8h | Communications Plan |
| 20 | 1.1.1.1.3.4 | Submit to BAH | milestone | 0d | 2006-12-15 A | 2006-12-15 A | 19 | 100% |  | 2006-12-15 | 2006-12-15 | 0d |  |  | Edmond |  |  |  |
| 21 | 1.1.1.1.4 | **Adopters Collaboration Plan** |  | 11d | 2006-12-01 A | 2006-12-15 A |  | 100% |  | 2006-12-01 | 2006-12-15 | 11d |  |  |  | 368h | 368h | Collaboration Plan |
| 22 | 1.1.1.1.4.1 | Developers Draft |  | 5d | 2006-12-01 A | 2006-12-07 A |  | 100% |  | 2006-12-01 | 2006-12-07 | 5d |  |  | Edmond; Ram; Warren; Cal | 160h | 160h |  |
| 23 | 1.1.1.1.4.2 | Adopters/Collaborators Review |  | 5d | 2006-12-08 A | 2006-12-14 A | 22 | 100% |  | 2006-12-08 | 2006-12-14 | 5d |  |  | Mayo; WF; AE_SIG; VCDE_WS; Arch_WS | 200h | 200h |  |
| 24 | 1.1.1.1.4.3 | Developers Update |  | 1d | 2006-12-15 A | 2006-12-15 A | 23 | 100% |  | 2006-12-15 | 2006-12-15 | 1d |  |  | Edmond | 8h | 8h |  |
| 25 | 1.1.1.1.4.4 | Submit to BAH | milestone | 0d | 2006-12-15 A | 2006-12-15 A | 24 | 100% |  | 2006-12-15 | 2006-12-15 | 0d |  |  | Edmond |  |  |  |

| ID | WBS | Task | Type | Duration | Start | Finish | Predecessors | Complete | Baseline start | Baseline finish | Baseline duration | Constraint | Resources | Work | Actual work | Text1 |
| --- | --- | --- | --- | --- | --- | --- | --- | --- | --- | --- | --- | --- | --- | --- | --- | --- |
| 26 | 1.1.1.1.5 | **Risk and Issue Management Plan** |  | 11d | 2006-12-01 A | 2006-12-15 A |  | 100% | 2006-12-01 | 2006-12-15 | 11d |  |  | 248h | 248h | Risk Matrix |
| 27 | 1.1.1.1.5.1 | Developers Draft |  | 5d | 2006-12-01 A | 2006-12-07 A |  | 100% | 2006-12-01 | 2006-12-07 | 5d |  | Edmond | 40h | 40h |  |
| 28 | 1.1.1.1.5.2 | Adopters/Collaborators Review |  | 5d | 2006-12-08 A | 2006-12-14 A | 27 | 100% | 2006-12-08 | 2006-12-14 | 5d |  | Mayo; WF; AE_SIG; VCDE_WS; Arch_WS | 200h | 200h |  |
| 29 | 1.1.1.1.5.3 | Developers Update |  | 1d | 2006-12-15 A | 2006-12-15 A | 28 | 100% | 2006-12-15 | 2006-12-15 | 1d |  | Edmond | 8h | 8h |  |
| 30 | 1.1.1.1.5.4 | Submit to BAH | milestone | 0d | 2006-12-15 A | 2006-12-15 A | 29 | 100% | 2006-12-15 | 2006-12-15 | 0d |  | Edmond |  |  |  |
| 31 | 1.1.1.1.6 | **caAERS Vision and Scope Document (Task 1.8)** |  | 11d | 2006-12-06 A | 2006-12-20 A |  | 100% | 2006-12-06 | 2006-12-20 | 11d |  |  | 400h | 400h | Scope Document |
| 32 | 1.1.1.1.6.1 | Developers Draft |  | 5d | 2006-12-06 A | 2006-12-12 A |  | 100% | 2006-12-06 | 2006-12-12 | 5d | start no earlier than 2006-12-06 | Warren; Cal; Renee; Ram | 160h | 160h |  |
| 33 | 1.1.1.1.6.2 | Adopters/Collaborators Review |  | 5d | 2006-12-13 A | 2006-12-19 A | 32 | 100% | 2006-12-13 | 2006-12-19 | 5d |  | Mayo; WF; AE_SIG; VCDE_WS; Arch_WS | 200h | 200h |  |
| 34 | 1.1.1.1.6.3 | Developers Update |  | 1d | 2006-12-20 A | 2006-12-20 A | 33 | 100% | 2006-12-20 | 2006-12-20 | 1d |  | Warren; Cal; Renee; Ram; Edmond | 40h | 40h |  |
| 35 | 1.1.1.1.6.4 | Submit to BAH | milestone | 0d | 2006-12-20 A | 2006-12-20 A | 34 | 100% | 2006-12-20 | 2006-12-20 | 0d |  | Edmond |  |  |  |
| 36 | 1.1.1.1.7 | **Test and QA Mgmt Plan Document (Task 2.6)** |  | 9d | 2006-12-18 A | 2006-12-29 A |  | 100% | 2006-12-18 | 2006-12-29 | 9d |  |  | 328h | 328h |  |
| 37 | 1.1.1.1.7.1 | Developer Draft |  | 3d | 2006-12-18 A | 2006-12-20 A |  | 100% | 2006-12-18 | 2006-12-20 | 3d | start no earlier than 2006-12-18 | Edmond; Vinay; Joshua; Rhett; Natasha | 120h | 120h |  |
| 38 | 1.1.1.1.7.2 | Adopters/Collobators Review |  | 5d | 2006-12-21 A | 2006-12-28 A | 37 | 100% | 2006-12-21 | 2006-12-28 | 5d |  | Mayo; WF; AE_SIG; VCDE_WS; Arch_WS | 200h | 200h |  |
| 39 | 1.1.1.1.7.3 | Developer Update |  | 1d | 2006-12-29 A | 2006-12-29 A | 38 | 100% | 2006-12-29 | 2006-12-29 | 1d |  | Edmond | 8h | 8h |  |
| 40 | 1.1.1.1.7.4 | Submit to BAH | milestone | 0d | 2006-12-29 A | 2006-12-29 A | 39 | 100% | 2006-12-29 | 2006-12-29 | 0d |  | Edmond |  |  |  |
| 41 | 1.1.1.1.8 | **caAERS F2F (Cross-Cutting WS) Meeting Planning** |  | 13d | 2006-12-01 A | 2006-12-19 A |  | 100% | 2006-12-01 | 2006-12-19 | 13d |  |  | 136h | 136h |  |
| 42 | 1.1.1.1.8.1 | Set Date |  | 1d | 2006-12-01 A | 2006-12-01 A |  | 100% | 2006-12-01 | 2006-12-01 | 1d |  | Edmond | 8h | 8h |  |
| 43 | 1.1.1.1.8.2 | Draft Agenda |  | 1d | 2006-12-15 A | 2006-12-15 A | 7 | 100% | 2006-12-15 | 2006-12-15 | 1d | start no earlier than 2006-12-15 | Ram; Vinay; Warren; Cal; Renee; Edmond | 48h | 48h |  |
| 44 | 1.1.1.1.8.3 | Review by Adopters/Collaborators |  | 2d | 2006-12-18 A | 2006-12-19 A | 43 | 100% | 2006-12-18 | 2006-12-19 | 2d |  | Mayo; WF; AE_SIG; VCDE_WS; Arch_WS | 80h | 80h |  |
| 45 | 1.1.1.1.8.4 | Finalize F2F Meeting Agenda and Details | milestone | 0d | 2006-12-19 A | 2006-12-19 A | 44 | 100% | 2006-12-19 | 2006-12-19 | 0d |  | Edmond |  |  |  |
| 46 | 1.1.1.1.9 | **Weekly Team/Developers Meeting** |  | 11d | 2006-12-11 A | 2006-12-26 A |  | 100% | 2006-12-11 | 2006-12-26 | 11d |  |  | 72h | 72h |  |
| 47 | 1.1.1.1.9.1 | Weekly Team Meeting 1 |  | 1d | 2006-12-11 A | 2006-12-11 A |  | 100% | 2006-12-11 | 2006-12-11 | 1d | start no earlier than 2006-12-11 | Edmond; Vinay; Functional Team Lead | 24h | 24h |  |
| 48 | 1.1.1.1.9.2 | Weekly Team Meeting 2 |  | 1d | 2006-12-18 A | 2006-12-18 A |  | 100% | 2006-12-18 | 2006-12-18 | 1d | start no earlier than 2006-12-18 | Edmond; Vinay; Functional Team Lead | 24h | 24h |  |
| 49 | 1.1.1.1.9.3 | Weekly Team Meeting 3 |  | 1d | 2006-12-26 A | 2006-12-26 A |  | 100% | 2006-12-26 | 2006-12-26 | 1d | start no earlier than 2006-12-25 | Edmond; Vinay; Functional Team Lead | 24h | 24h |  |

| ID | WBS | Task | Type | Duration | Start | Finish | Predecessors | Complete | Baseline start | Baseline finish | Baseline duration | Constraint | Resources | Work | Actual work |
| --- | --- | --- | --- | --- | --- | --- | --- | --- | --- | --- | --- | --- | --- | --- | --- |
| 50 | 1.1.1.1.10 | **Status and Risk Reporting** |  | 10d | 2006-12-15 A | 2006-12-29 A |  | 100% | 2006-12-15 | 2006-12-29 | 10d |  |  | 32h | 32h |
| 51 | 1.1.1.1.10.1 | Bi-weekly Risk Update in caMP (Task 1.4) | milestone | 0d | 2006-12-15 A | 2006-12-15 A |  | 100% | 2006-12-15 | 2006-12-15 | 0d | start no earlier than 2006-12-15 | Edmond |  |  |
| 52 | 1.1.1.1.10.2 | Bi-weekly Risk Matrix Update Meeting |  | 1d | 2006-12-22 A | 2006-12-22 A |  | 100% | 2006-12-22 | 2006-12-22 | 1d | start no earlier than 2006-12-22 | Edmond; Vinay | 16h | 16h |
| 53 | 1.1.1.1.10.3 | Bi-weekly Risk Update in caMP (Task 1.4) | milestone | 0d | 2006-12-29 A | 2006-12-29 A |  | 100% | 2006-12-29 | 2006-12-29 | 0d | start no earlier than 2006-12-29 | Edmond |  |  |
| 54 | 1.1.1.1.10.4 | Bi-weekly Status Update Meeting with BAH/NCI |  | 1d | 2006-12-29 A | 2006-12-29 A |  | 100% | 2006-12-29 | 2006-12-29 | 1d | start no earlier than 2006-12-29 | Edmond; Vinay | 16h | 16h |
| 55 | 1.1.1.1.10.5 | Monthly Status Report (Task 1.3) | milestone | 0d | 2006-12-29 A | 2006-12-29 A |  | 100% | 2006-12-29 | 2006-12-29 | 0d | start no earlier than 2006-12-29 | Edmond |  |  |
| 56 | 1.1.1.1.10.6 | Monthly Risk Matrix Update (Task 1.3) | milestone | 0d | 2006-12-29 A | 2006-12-29 A |  | 100% | 2006-12-29 | 2006-12-29 | 0d | must finish on 2006-12-29 |  |  |  |
| 57 | 1.1.1.1.11 | **Collaboration Management Activities** |  | 10d | 2006-12-14 A | 2006-12-28 A |  | 100% | 2006-12-14 | 2006-12-28 | 10d |  |  | 64h | 64h |
| 58 | 1.1.1.1.11.1 | Bi-Weekly AE SIG Meeting |  | 1d | 2006-12-14 A | 2006-12-14 A |  | 100% | 2006-12-14 | 2006-12-14 | 1d | start no earlier than 2006-12-14 | Edmond; Warren; Cal; Renee | 32h | 32h |
| 59 | 1.1.1.1.11.2 | Bi-Weekly AE SIG Meeting |  | 1d | 2006-12-28 A | 2006-12-28 A |  | 100% | 2006-12-28 | 2006-12-28 | 1d | start no earlier than 2006-12-28 | Edmond; Warren; Cal; Renee | 32h | 32h |
| 60 | 1.1.1.2 | **Set up Development Environment** |  | 7d | 2006-12-01 A | 2006-12-11 A |  | 100% | 2006-12-01 | 2006-12-11 | 7d |  |  | 144h | 144h |
| 61 | 1.1.1.2.1 | Set up SCM (Subversion) |  | 2d | 2006-12-01 A | 2006-12-04 A |  | 100% | 2006-12-01 | 2006-12-04 | 2d |  | Rhett; Vinay | 32h | 32h |
| 62 | 1.1.1.2.2 | Create Build Scripts (using Ant) |  | 3d | 2006-12-05 A | 2006-12-07 A | 61 | 100% | 2006-12-05 | 2006-12-07 | 3d |  | Rhett | 24h | 24h |
| 63 | 1.1.1.2.3 | Decide on Tech Stack |  | 2d | 2006-12-01 A | 2006-12-04 A |  | 100% | 2006-12-01 | 2006-12-04 | 2d |  | Rhett; Vinay; Joshua | 48h | 48h |
| 64 | 1.1.1.2.4 | Prepare Development Server |  | 5d | 2006-12-05 A | 2006-12-11 A | 63 | 100% | 2006-12-05 | 2006-12-11 | 5d |  | Vinay | 40h | 40h |
| 65 | 1.1.1.3 | **Requirements** |  | 20d | 2006-12-01 A | 2006-12-29 A |  | 100% | 2006-12-01 | 2006-12-29 | 20d |  |  | 1392h | 1392h |
| 66 | 1.1.1.3.1 | Review Existing R1 Prototype and Requirements |  | 5d | 2006-12-01 A | 2006-12-07 A |  | 100% | 2006-12-01 | 2006-12-07 | 5d |  | Vinay; Joshua; Rhett; Krikor; Padmaja; Sujith; Renee; David; Brenda; Natasha | 400h | 400h |
| 67 | 1.1.1.3.2 | Select Use Cases |  | 1d | 2006-12-08 A | 2006-12-08 A | 66 | 100% | 2006-12-08 | 2006-12-08 | 1d |  | Ram; Vinay | 16h | 16h |
| 68 | 1.1.1.3.3 | Assign Use Cases |  | 1d | 2006-12-11 A | 2006-12-11 A | 67 | 100% | 2006-12-11 | 2006-12-11 | 1d |  | Ram; Vinay | 16h | 16h |
| 69 | 1.1.1.3.4 | **Review and Update Use Case Documents (Task 2.1)** |  | 8d | 2006-12-12 A | 2006-12-21 A | 68 | 100% | 2006-12-12 | 2006-12-21 | 8d |  |  | 632h | 632h |
| 70 | 1.1.1.3.4.1 | **Create Study/Protocol** |  | 8d | 2006-12-12 A | 2006-12-21 A |  | 100% | 2006-12-12 | 2006-12-21 | 8d |  |  | 248h | 248h |
| 71 | 1.1.1.3.4.1.1 | Developer draft |  | 5d | 2006-12-12 A | 2006-12-18 A |  | 100% | 2006-12-12 | 2006-12-18 | 5d |  | Padmaja; Sujith; Renee; Dave | 160h | 160h |
| 72 | 1.1.1.3.4.1.2 | Adopters/Collaborators Review |  | 2d | 2006-12-19 A | 2006-12-20 A | 71 | 100% | 2006-12-19 | 2006-12-20 | 2d |  | Mayo; WF; AE_SIG; VCDE_WS; Arch_WS | 80h | 80h |
| 73 | 1.1.1.3.4.1.3 | Developers Update |  | 1d | 2006-12-21 A | 2006-12-21 A | 72 | 100% | 2006-12-21 | 2006-12-21 | 1d |  | John | 8h | 8h |
| 74 | 1.1.1.3.4.1.4 | Submit to BAH (Task 2.1) | milestone | 0d | 2006-12-21 A | 2006-12-21 A | 73 | 100% | 2006-12-21 | 2006-12-21 | 0d |  | Edmond |  |  |

| ID | WBS | Task | Type | Duration | Start | Finish | Predecessors | Complete | Remaining | Baseline start | Baseline finish | Baseline duration | Total slack | Resources | Work | Actual work |
| --- | --- | --- | --- | --- | --- | --- | --- | --- | --- | --- | --- | --- | --- | --- | --- | --- |
| 75 | 1.1.1.3.4.2 | **Create Participant** |  | 8d | 2006-12-12 A | 2006-12-21 A |  | 100% |  | 2006-12-12 | 2006-12-21 | 8d |  |  | 128h | 128h |
| 76 | 1.1.1.3.4.2.1 | Developer draft |  | 5d | 2006-12-12 A | 2006-12-18 A |  | 100% |  | 2006-12-12 | 2006-12-18 | 5d |  | Krikor | 40h | 40h |
| 77 | 1.1.1.3.4.2.2 | Adopters/Collaborators Review |  | 2d | 2006-12-19 A | 2006-12-20 A | 76 | 100% |  | 2006-12-19 | 2006-12-20 | 2d |  | Mayo; WF; AE_SIG; VCDE_WS; Arch_WS | 80h | 80h |
| 78 | 1.1.1.3.4.2.3 | Developers Update |  | 1d | 2006-12-21 A | 2006-12-21 A | 77 | 100% |  | 2006-12-21 | 2006-12-21 | 1d |  | John | 8h | 8h |
| 79 | 1.1.1.3.4.2.4 | Submit to BAH (Task 2.1) | milestone | 0d | 2006-12-21 A | 2006-12-21 A | 78 | 100% |  | 2006-12-21 | 2006-12-21 | 0d |  | Edmond |  |  |
| 80 | 1.1.1.3.4.3 | **Create AE** |  | 8d | 2006-12-12 A | 2006-12-21 A |  | 100% |  | 2006-12-12 | 2006-12-21 | 8d |  |  | 128h | 128h |
| 81 | 1.1.1.3.4.3.1 | Developer draft |  | 5d | 2006-12-12 A | 2006-12-18 A |  | 100% |  | 2006-12-12 | 2006-12-18 | 5d |  | Rhett | 40h | 40h |
| 82 | 1.1.1.3.4.3.2 | Adopters/Collaborators Review |  | 2d | 2006-12-19 A | 2006-12-20 A | 81 | 100% |  | 2006-12-19 | 2006-12-20 | 2d |  | Mayo; WF; AE_SIG; VCDE_WS; Arch_WS | 80h | 80h |
| 83 | 1.1.1.3.4.3.3 | Developers Update |  | 1d | 2006-12-21 A | 2006-12-21 A | 82 | 100% |  | 2006-12-21 | 2006-12-21 | 1d |  | John | 8h | 8h |
| 84 | 1.1.1.3.4.3.4 | Submit to BAH (Task 2.1) | milestone | 0d | 2006-12-21 A | 2006-12-21 A | 83 | 100% |  | 2006-12-21 | 2006-12-21 | 0d |  | Edmond |  |  |
| 85 | 1.1.1.3.4.4 | **Login** |  | 7d | 2006-12-12 A | 2006-12-20 A |  | 100% |  | 2006-12-12 | 2006-12-20 | 7d |  |  | 128h | 128h |
| 86 | 1.1.1.3.4.4.1 | Developer draft |  | 5d | 2006-12-12 A | 2006-12-18 A |  | 100% |  | 2006-12-12 | 2006-12-18 | 5d |  | Padmaja; Sujith | 80h | 80h |
| 87 | 1.1.1.3.4.4.2 | Adopters/Collaborators Review |  | 1d | 2006-12-19 A | 2006-12-19 A | 86 | 100% |  | 2006-12-19 | 2006-12-19 | 1d |  | Mayo; WF; AE_SIG; VCDE_WS; Arch_WS | 40h | 40h |
| 88 | 1.1.1.3.4.4.3 | Developers Update |  | 1d | 2006-12-20 A | 2006-12-20 A | 87 | 100% |  | 2006-12-20 | 2006-12-20 | 1d |  | John | 8h | 8h |
| 89 | 1.1.1.3.4.4.4 | Submit to BAH (Task 2.1) | milestone | 0d | 2006-12-20 A | 2006-12-20 A | 88 | 100% |  | 2006-12-20 | 2006-12-20 | 0d |  | Edmond |  |  |
| 90 | 1.1.1.3.5 | **SRS document (Task 2.2)** |  | 11d | 2006-12-14 A | 2006-12-29 A | 69SS+2d | 100% |  | 2006-12-14 | 2006-12-29 | 11d |  |  | 328h | 328h |
| 91 | 1.1.1.3.5.1 | Developer draft |  | 5d | 2006-12-14 A | 2006-12-20 A |  | 100% |  | 2006-12-14 | 2006-12-20 | 5d |  | John; Vinay; Rhett | 120h | 120h |
| 92 | 1.1.1.3.5.2 | Adopter review |  | 5d | 2006-12-21 A | 2006-12-28 A | 91 | 100% |  | 2006-12-21 | 2006-12-28 | 5d |  | Mayo; WF; AE_SIG; VCDE_WS; Arch_WS | 200h | 200h |
| 93 | 1.1.1.3.5.3 | Developer update |  | 1d | 2006-12-29 A | 2006-12-29 A | 92 | 100% |  | 2006-12-29 | 2006-12-29 | 1d |  | John | 8h | 8h |
| 94 | 1.1.1.3.5.4 | Deliver SRS document to BAH (Task 2.2) | milestone | 0d | 2006-12-29 A | 2006-12-29 A | 93 | 100% |  | 2006-12-29 | 2006-12-29 | 0d |  | Edmond |  |  |
| 95 | 1.1.1.4 | **Analysis and Design** |  | 10d | 2006-12-18 A | 2007-01-02 | 68SS+5d | 95% | 0.47d | 2006-12-18 | 2007-01-02 | 10d | 191d |  | 1488h | 1452h |
| 96 | 1.1.1.4.1 | **Design Documents (Task 2.4)** |  | 8d | 2006-12-18 A | 2006-12-28 A |  | 100% |  | 2006-12-18 | 2006-12-28 | 8d |  |  | 936h | 936h |
| 97 | 1.1.1.4.1.1 | **Create Study/Protocol Design Documents** |  | 8d | 2006-12-18 A | 2006-12-28 A |  | 100% |  | 2006-12-18 | 2006-12-28 | 8d |  |  | 256h | 256h |
| 98 | 1.1.1.4.1.1.1 | Develop appropriate UML Artifacts |  | 5d | 2006-12-18 A | 2006-12-22 A |  | 100% |  | 2006-12-18 | 2006-12-22 | 5d |  | Padmaja; Sujith | 80h | 80h |
| 99 | 1.1.1.4.1.1.2 | Developer draft |  | 5d | 2006-12-18 A | 2006-12-22 A |  | 100% |  | 2006-12-18 | 2006-12-22 | 5d |  | Padmaja; Sujith | 80h | 80h |
| 100 | 1.1.1.4.1.1.3 | Adopters/Collaborators Review |  | 2d | 2006-12-26 A | 2006-12-27 A | 99 | 100% |  | 2006-12-26 | 2006-12-27 | 2d |  | Mayo; WF; AE_SIG; VCDE_WS; Arch_WS | 80h | 80h |
| 101 | 1.1.1.4.1.1.4 | Developers Update |  | 1d | 2006-12-28 A | 2006-12-28 A | 100 | 100% |  | 2006-12-28 | 2006-12-28 | 1d |  | Padmaja; Sujith | 16h | 16h |
| 102 | 1.1.1.4.1.1.5 | Submit to BAH (Task 2.3 and 2.4) | milestone | 0d | 2006-12-28 A | 2006-12-28 A | 101 | 100% |  | 2006-12-28 | 2006-12-28 | 0d |  | Edmond |  |  |

| ID | WBS | Task | Type | Duration | Start | Finish | Predecessors | Complete | Baseline start | Baseline finish | Baseline duration | Resources | Work | Actual work |
| --- | --- | --- | --- | --- | --- | --- | --- | --- | --- | --- | --- | --- | --- | --- |
| 103 | 1.1.1.4.1.2 | **Create Participant Design Documents** |  | 8d | 2006-12-18 A | 2006-12-28 A |  | 100% | 2006-12-18 | 2006-12-28 | 8d |  | 168h | 168h |
| 104 | 1.1.1.4.1.2.1 | Develop appropriate UML Artifacts |  | 5d | 2006-12-18 A | 2006-12-22 A |  | 100% | 2006-12-18 | 2006-12-22 | 5d | Krikor | 40h | 40h |
| 105 | 1.1.1.4.1.2.2 | Developer draft |  | 5d | 2006-12-18 A | 2006-12-22 A |  | 100% | 2006-12-18 | 2006-12-22 | 5d | Krikor | 40h | 40h |
| 106 | 1.1.1.4.1.2.3 | Adopters/Collaborators Review |  | 2d | 2006-12-26 A | 2006-12-27 A | 105 | 100% | 2006-12-26 | 2006-12-27 | 2d | Mayo; WF; AE_SIG; VCDE_WS; Arch_WS | 80h | 80h |
| 107 | 1.1.1.4.1.2.4 | Developers Update |  | 1d | 2006-12-28 A | 2006-12-28 A | 106 | 100% | 2006-12-28 | 2006-12-28 | 1d | Krikor | 8h | 8h |
| 108 | 1.1.1.4.1.2.5 | Submit to BAH (Task 2.3 and 2.4) | milestone | 0d | 2006-12-28 A | 2006-12-28 A | 107 | 100% | 2006-12-28 | 2006-12-28 | 0d | Edmond |  |  |
| 109 | 1.1.1.4.1.3 | **Create AE Design Documents** |  | 8d | 2006-12-18 A | 2006-12-28 A |  | 100% | 2006-12-18 | 2006-12-28 | 8d |  | 168h | 168h |
| 110 | 1.1.1.4.1.3.1 | Develop appropriate UML Artifacts |  | 5d | 2006-12-18 A | 2006-12-22 A |  | 100% | 2006-12-18 | 2006-12-22 | 5d | Rhett | 40h | 40h |
| 111 | 1.1.1.4.1.3.2 | Developer draft |  | 5d | 2006-12-18 A | 2006-12-22 A |  | 100% | 2006-12-18 | 2006-12-22 | 5d | Rhett | 40h | 40h |
| 112 | 1.1.1.4.1.3.3 | Adopters/Collaborators Review |  | 2d | 2006-12-26 A | 2006-12-27 A | 111 | 100% | 2006-12-26 | 2006-12-27 | 2d | Mayo; WF; AE_SIG; VCDE_WS; Arch_WS | 80h | 80h |
| 113 | 1.1.1.4.1.3.4 | Developers Update |  | 1d | 2006-12-28 A | 2006-12-28 A | 112 | 100% | 2006-12-28 | 2006-12-28 | 1d | Rhett | 8h | 8h |
| 114 | 1.1.1.4.1.3.5 | Submit to BAH (Task 2.3 and 2.4) | milestone | 0d | 2006-12-28 A | 2006-12-28 A | 113 | 100% | 2006-12-28 | 2006-12-28 | 0d | Edmond |  |  |
| 115 | 1.1.1.4.1.4 | **Login Design Documents** |  | 8d | 2006-12-18 A | 2006-12-28 A |  | 100% | 2006-12-18 | 2006-12-28 | 8d |  | 216h | 216h |
| 116 | 1.1.1.4.1.4.1 | Develop appropriate UML Artifacts |  | 5d | 2006-12-18 A | 2006-12-22 A |  | 100% | 2006-12-18 | 2006-12-22 | 5d | Rhett | 40h | 40h |
| 117 | 1.1.1.4.1.4.2 | Developer draft |  | 5d | 2006-12-18 A | 2006-12-22 A |  | 100% | 2006-12-18 | 2006-12-22 | 5d | Padmaja; Sujith | 80h | 80h |
| 118 | 1.1.1.4.1.4.3 | Adopters/Collaborators Review |  | 2d | 2006-12-26 A | 2006-12-27 A | 117 | 100% | 2006-12-26 | 2006-12-27 | 2d | Mayo; WF; AE_SIG; VCDE_WS; Arch_WS | 80h | 80h |
| 119 | 1.1.1.4.1.4.4 | Developers Update |  | 1d | 2006-12-28 A | 2006-12-28 A | 118 | 100% | 2006-12-28 | 2006-12-28 | 1d | Padmaja; Sujith | 16h | 16h |
| 120 | 1.1.1.4.1.4.5 | Submit to BAH (Task 2.3 and 2.4) | milestone | 0d | 2006-12-28 A | 2006-12-28 A | 119 | 100% | 2006-12-28 | 2006-12-28 | 0d | Edmond |  |  |
| 121 | 1.1.1.4.1.5 | **UI/Mockups Design Documents** |  | 8d | 2006-12-18 A | 2006-12-28 A |  | 100% | 2006-12-18 | 2006-12-28 | 8d |  | 128h | 128h |
| 122 | 1.1.1.4.1.5.1 | Developer Draft |  | 5d | 2006-12-18 A | 2006-12-22 A |  | 100% | 2006-12-18 | 2006-12-22 | 5d | Richard | 40h | 40h |
| 123 | 1.1.1.4.1.5.2 | Adopters/Collaborators Review |  | 2d | 2006-12-26 A | 2006-12-27 A | 122 | 100% | 2006-12-26 | 2006-12-27 | 2d | Mayo; WF; AE_SIG; VCDE_WS; Arch_WS | 80h | 80h |
| 124 | 1.1.1.4.1.5.3 | Developers Update |  | 1d | 2006-12-28 A | 2006-12-28 A | 123 | 100% | 2006-12-28 | 2006-12-28 | 1d | Richard | 8h | 8h |
| 125 | 1.1.1.4.1.5.4 | Submit to BAH (Task 2.4) | milestone | 0d | 2006-12-28 A | 2006-12-28 A | 124 | 100% | 2006-12-28 | 2006-12-28 | 0d | Edmond |  |  |
| 126 | 1.1.1.4.2 | **ESB** |  | 7d | 2006-12-18 A | 2006-12-27 A |  | 100% | 2006-12-18 | 2006-12-27 | 7d |  | 112h | 112h |
| 127 | 1.1.1.4.2.1 | Evalutate technologies by prototyping |  | 7d | 2006-12-18 A | 2006-12-27 A |  | 100% | 2006-12-18 | 2006-12-27 | 7d | Vinay; Joshua | 112h | 112h |

| ID | WBS | Task | Duration | Start | Finish | Predecessors | Complete | Remaining | Baseline start | Baseline finish | Baseline duration | Total slack | Free slack | Resources | Work | Actual work |
| --- | --- | --- | --- | --- | --- | --- | --- | --- | --- | --- | --- | --- | --- | --- | --- | --- |
| 128 | 1.1.1.4.3 | **Grid service** | 7d | 2006-12-18 A | 2006-12-27 A |  | 100% |  | 2006-12-18 | 2006-12-27 | 7d |  |  |  | 112h | 112h |
| 129 | 1.1.1.4.3.1 | Evaluate caGrid 1.0 service infrastructure | 7d | 2006-12-18 A | 2006-12-27 A |  | 100% |  | 2006-12-18 | 2006-12-27 | 7d |  |  | Vinay; Joshua | 112h | 112h |
| 130 | 1.1.1.4.4 | **Database** | 3d | 2006-12-18 A | 2006-12-20 A |  | 100% |  | 2006-12-18 | 2006-12-20 | 3d |  |  |  | 96h | 96h |
| 131 | 1.1.1.4.4.1 | First draft of database structure | 3d | 2006-12-18 A | 2006-12-20 A |  | 100% |  | 2006-12-18 | 2006-12-20 | 3d |  |  | Rhett; Padmaja; Sujith; Krikor | 96h | 96h |
| 132 | 1.1.1.4.5 | **Domain model** | 9d | 2006-12-18 A | 2006-12-29 |  | 50% | 4.5d | 2006-12-18 | 2006-12-29 | 9d | 192d |  |  | 72h | 36h |
| 133 | 1.1.1.4.5.1 | Create model harmonized with BRIDG | 5d | 2006-12-18 A | 2006-12-22 |  | 50% | 2.5d | 2006-12-18 | 2006-12-22 | 5d | 194d | 0d | John | 40h | 20h |
| 134 | 1.1.1.4.5.2 | Create first draft of model | 4d | 2006-12-26 A | 2006-12-29 | 133 | 50% | 2d | 2006-12-26 | 2006-12-29 | 4d | 192d |  | John | 32h | 16h |
| 135 | 1.1.1.4.6 | **Security** | 10d | 2006-12-18 A | 2007-01-02 A |  | 100% |  | 2006-12-18 | 2007-01-02 | 10d |  |  |  | 160h | 160h |
| 136 | 1.1.1.4.6.1 | Evaluate caGrid 1.0 security infrastructure | 10d | 2006-12-18 A | 2007-01-02 A | 68 | 100% |  | 2006-12-18 | 2007-01-02 | 10d |  |  | Vinay; Joshua | 160h | 160h |
| 137 | 1.1.1.5 | **Implementation** | 5d | 2006-12-19 A | 2006-12-26 A | 95SS+1d | 100% |  | 2006-12-19 | 2006-12-26 | 5d |  |  |  | 1280h | 1280h |
| 138 | 1.1.1.5.1 | **Enterprise Service Bus** | 5d | 2006-12-19 A | 2006-12-26 A |  | 100% |  | 2006-12-19 | 2006-12-26 | 5d |  |  |  | 80h | 80h |
| 139 | 1.1.1.5.1.1 | Setup initial project | 5d | 2006-12-19 A | 2006-12-26 A |  | 100% |  | 2006-12-19 | 2006-12-26 | 5d |  |  | Vinay; Joshua | 80h | 80h |
| 140 | 1.1.1.5.2 | **Grid service** | 5d | 2006-12-19 A | 2006-12-26 A |  | 100% |  | 2006-12-19 | 2006-12-26 | 5d |  |  |  | 80h | 80h |
| 141 | 1.1.1.5.2.1 | Create grid service skeleton | 5d | 2006-12-19 A | 2006-12-26 A |  | 100% |  | 2006-12-19 | 2006-12-26 | 5d |  |  | Vinay; Joshua | 80h | 80h |
| 142 | 1.1.1.5.3 | **Create Study/Protocol** | 5d | 2006-12-19 A | 2006-12-26 A |  | 100% |  | 2006-12-19 | 2006-12-26 | 5d |  |  |  | 640h | 640h |
| 143 | 1.1.1.5.3.1 | Implement O/R mapping | 5d | 2006-12-19 A | 2006-12-26 A |  | 100% |  | 2006-12-19 | 2006-12-26 | 5d |  |  | Padmaja; Sujith | 80h | 80h |
| 144 | 1.1.1.5.3.2 | Develop StudyDAO | 5d | 2006-12-19 A | 2006-12-26 A |  | 100% |  | 2006-12-19 | 2006-12-26 | 5d |  |  | Padmaja; Sujith | 80h | 80h |
| 145 | 1.1.1.5.3.3 | Develop StudyService | 5d | 2006-12-19 A | 2006-12-26 A |  | 100% |  | 2006-12-19 | 2006-12-26 | 5d |  |  | Padmaja; Sujith | 80h | 80h |
| 146 | 1.1.1.5.3.4 | Develop controller and command objects | 5d | 2006-12-19 A | 2006-12-26 A |  | 100% |  | 2006-12-19 | 2006-12-26 | 5d |  |  | Padmaja; Sujith | 80h | 80h |
| 147 | 1.1.1.5.3.5 | Develop UI | 5d | 2006-12-19 A | 2006-12-26 A |  | 100% |  | 2006-12-19 | 2006-12-26 | 5d |  |  | Padmaja; Sujith | 80h | 80h |
| 148 | 1.1.1.5.3.6 | Develop JUnit test cases | 5d | 2006-12-19 A | 2006-12-26 A |  | 100% |  | 2006-12-19 | 2006-12-26 | 5d |  |  | Padmaja; Sujith | 80h | 80h |
| 149 | 1.1.1.5.3.7 | Develop | 5d | 2006-12-19 A | 2006-12-26 A |  | 100% |  | 2006-12-19 | 2006-12-26 | 5d |  |  | Padmaja; Sujith | 80h | 80h |
| 150 | 1.1.1.5.3.8 | Login | 5d | 2006-12-19 A | 2006-12-26 A |  | 100% |  | 2006-12-19 | 2006-12-26 | 5d |  |  | Padmaja; Sujith | 80h | 80h |
| 151 | 1.1.1.5.4 | **Create Participant** | 5d | 2006-12-19 A | 2006-12-26 A |  | 100% |  | 2006-12-19 | 2006-12-26 | 5d |  |  |  | 240h | 240h |
| 152 | 1.1.1.5.4.1 | Implement O/R mapping | 5d | 2006-12-19 A | 2006-12-26 A |  | 100% |  | 2006-12-19 | 2006-12-26 | 5d |  |  | Krikor | 40h | 40h |
| 153 | 1.1.1.5.4.2 | Develop ParticipantDAO | 5d | 2006-12-19 A | 2006-12-26 A |  | 100% |  | 2006-12-19 | 2006-12-26 | 5d |  |  | Krikor | 40h | 40h |
| 154 | 1.1.1.5.4.3 | Develop ParticipantService | 5d | 2006-12-19 A | 2006-12-26 A |  | 100% |  | 2006-12-19 | 2006-12-26 | 5d |  |  | Krikor | 40h | 40h |
| 155 | 1.1.1.5.4.4 | Develop controller and command objects | 5d | 2006-12-19 A | 2006-12-26 A |  | 100% |  | 2006-12-19 | 2006-12-26 | 5d |  |  | Krikor | 40h | 40h |
| 156 | 1.1.1.5.4.5 | Develop UI | 5d | 2006-12-19 A | 2006-12-26 A |  | 100% |  | 2006-12-19 | 2006-12-26 | 5d |  |  | Krikor | 40h | 40h |
| 157 | 1.1.1.5.4.6 | Develop JUnit test cases | 5d | 2006-12-19 A | 2006-12-26 A |  | 100% |  | 2006-12-19 | 2006-12-26 | 5d |  |  | Krikor | 40h | 40h |

| ID | WBS | Task | Type | Duration | Start | Finish | Predecessors | Complete | Remaining | Baseline start | Baseline finish | Baseline duration | Total slack | Free slack | Constraint | Resources | Work | Actual work |
| --- | --- | --- | --- | --- | --- | --- | --- | --- | --- | --- | --- | --- | --- | --- | --- | --- | --- | --- |
| 158 | 1.1.1.5.5 | **Create AE** |  | 5d | 2006-12-19 A | 2006-12-26 A |  | 100% |  | 2006-12-19 | 2006-12-26 | 5d |  |  |  |  | 240h | 240h |
| 159 | 1.1.1.5.5.1 | Implement O/R mapping |  | 5d | 2006-12-19 A | 2006-12-26 A |  | 100% |  | 2006-12-19 | 2006-12-26 | 5d |  |  |  | Rhett | 40h | 40h |
| 160 | 1.1.1.5.5.2 | Develop AdverseEventDAO |  | 5d | 2006-12-19 A | 2006-12-26 A |  | 100% |  | 2006-12-19 | 2006-12-26 | 5d |  |  |  | Rhett | 40h | 40h |
| 161 | 1.1.1.5.5.3 | Develop AdverseEventService |  | 5d | 2006-12-19 A | 2006-12-26 A |  | 100% |  | 2006-12-19 | 2006-12-26 | 5d |  |  |  | Rhett | 40h | 40h |
| 162 | 1.1.1.5.5.4 | Develop controller and command objects |  | 5d | 2006-12-19 A | 2006-12-26 A |  | 100% |  | 2006-12-19 | 2006-12-26 | 5d |  |  |  | Rhett | 40h | 40h |
| 163 | 1.1.1.5.5.5 | Develop UI |  | 5d | 2006-12-19 A | 2006-12-26 A |  | 100% |  | 2006-12-19 | 2006-12-26 | 5d |  |  |  | Rhett | 40h | 40h |
| 164 | 1.1.1.5.5.6 | Develop JUnit test cases |  | 5d | 2006-12-19 A | 2006-12-26 A |  | 100% |  | 2006-12-19 | 2006-12-26 | 5d |  |  |  | Rhett | 40h | 40h |
| 165 | 1.1.1.6 | **Testing** |  | 8d | 2006-12-19 A | 2006-12-29 |  | 22% | 6.25d | 2006-12-19 | 2006-12-29 | 8d | 192d |  |  |  | 1080.24h | 242.06h |
| 166 | 1.1.1.6.1 | **Create Functional Tests** |  | 6d | 2006-12-19 A | 2006-12-27 | 69SS+5d | 25% | 4.5d | 2006-12-19 | 2006-12-27 | 6d | 194d |  |  |  | 968.24h | 242.06h |
| 167 | 1.1.1.6.1.1 | Create Study |  | 5d | 2006-12-19 A | 2006-12-26 |  | 25% | 3.75d | 2006-12-19 | 2006-12-26 | 5d | 195d |  |  | Renee; David; Brenda; Natasha; Mayo; WF | 240.24h | 60.06h |
| 168 | 1.1.1.6.1.2 | Create Participant |  | 5d | 2006-12-19 A | 2006-12-26 |  | 25% | 3.75d | 2006-12-19 | 2006-12-26 | 5d | 195d |  |  | Renee; David; Brenda; Natasha; Mayo; WF | 240h | 60h |
| 169 | 1.1.1.6.1.3 | Login |  | 5d | 2006-12-19 A | 2006-12-26 |  | 25% | 3.75d | 2006-12-19 | 2006-12-26 | 5d | 195d |  |  | Renee; David; Brenda; Natasha; Mayo; WF | 240h | 60h |
| 170 | 1.1.1.6.1.4 | Create AE |  | 5d | 2006-12-19 A | 2006-12-26 |  | 25% | 3.75d | 2006-12-19 | 2006-12-26 | 5d | 194.25d | 0d |  | Renee; David; Brenda; Natasha; Mayo; WF | 240h | 60h |
| 171 | 1.1.1.6.1.5 | RTM |  | 1d | 2006-12-27 A | 2006-12-27 | 170, 91 | 25% | 0.75d | 2006-12-27 | 2006-12-27 | 1d | 194d |  |  | John | 8h | 2h |
| 172 | 1.1.1.6.2 | **Final Tests of Iteration** |  | 3d | 2006-12-27 | 2006-12-29 |  |  |  | 2006-12-27 | 2006-12-29 | 3d | 162.86d |  |  |  | 112h |  |
| 173 | 1.1.1.6.2.1 | Deploy Prototype (Task 2.5) |  | 1d | 2006-12-27 | 2006-12-27 | 137 |  |  | 2006-12-27 | 2006-12-27 | 1d | 162.55d | 0d |  | Joshua; Rhett | 16h |  |
| 174 | 1.1.1.6.2.2 | Validation and Acceptance Testing |  | 2d | 2006-12-28 | 2006-12-29 | 173 |  |  | 2006-12-28 | 2006-12-29 | 2d | 162.55d | 0d |  | Renee; David; Brenda; Natasha; Mayo; WF | 96h |  |
| 175 | 1.1.1.6.2.3 | Submit Test Results Report (Task 2.7) | milestone | 0d | 2006-12-29 | 2006-12-29 | 174 |  |  | 2006-12-29 | 2006-12-29 | 0d | 162.55d | 0d |  |  |  |  |
| 176 | 1.1.2 | **Iteration 2** |  | 32d? | 2006-12-18 A | 2007-02-01 | 175 | 43% | 18.16d? | 2007-01-02 | 2007-02-01 | 23d | 169d |  |  |  | 3288h | 972h |
| 177 | 1.1.2.1 | Start Iteration 2 | milestone | 0d | 2007-01-02 | 2007-01-02 |  |  |  |  |  |  | 161.47d | 0d | start no earlier than 2007-01-02 |  |  |  |
| 178 | 1.1.2.2 | **Project Management** |  | 32d | 2006-12-18 A | 2007-02-01 | 177SS | 22% | 24.96d | 2007-01-02 | 2007-02-01 | 23d | 169d |  |  |  | 968h | 104h |
| 179 | 1.1.2.2.1 | Update Project Plan |  | 5d | 2007-01-02 | 2007-01-08 |  |  |  | 2007-01-02 | 2007-01-08 | 5d | 187d |  |  | Edmond | 40h |  |
| 180 | 1.1.2.2.2 | Update Test Plan Document (Task 2.6) |  | 5d | 2007-01-08 | 2007-01-12 |  |  |  | 2007-01-08 | 2007-01-12 | 5d | 183d |  | start no earlier than 2007-01-08 | Edmond; Vinay; Natasha | 120h |  |
| 181 | 1.1.2.2.3 | **Detailed Construction and Transition Plan** |  | 9d | 2007-01-22 | 2007-02-01 |  |  |  | 2007-01-22 | 2007-02-01 | 9d | 169d |  |  |  | 328h |  |
| 182 | 1.1.2.2.3.1 | Update Construction and Transition Phases |  | 5d | 2007-01-22 | 2007-01-26 |  |  |  | 2007-01-22 | 2007-01-26 | 5d | 169d | 0d | start no earlier than 2007-01-22 | Edmond; Ram; Vinay; Warren; Cal | 200h |  |
| 183 | 1.1.2.2.3.2 | Adopter review |  | 3d | 2007-01-29 | 2007-01-31 | 182 |  |  | 2007-01-29 | 2007-01-31 | 3d | 169d | 0d |  | Mayo; WF; AE_SIG; VCDE_WS; Arch_WS | 120h |  |
| 184 | 1.1.2.2.3.3 | Revisions |  | 1d | 2007-02-01 | 2007-02-01 | 183 |  |  | 2007-02-01 | 2007-02-01 | 1d | 169d | 0d |  | Edmond | 8h |  |
| 185 | 1.1.2.2.3.4 | Deliver Design document to BAH (Task 2.9) | milestone | 0d | 2007-02-01 | 2007-02-01 | 184 |  |  | 2007-02-01 | 2007-02-01 | 0d | 169d |  |  | Edmond |  |  |

| ID | WBS | Task | Type | Duration | Start | Finish | Predecessors | Complete | Remaining | Baseline start | Baseline finish | Baseline duration | Total slack | Free slack | Constraint | Resources | Work | Actual work |
| --- | --- | --- | --- | --- | --- | --- | --- | --- | --- | --- | --- | --- | --- | --- | --- | --- | --- | --- |
| 186 | 1.1.2.2.4 | **Change Control Board Plan and Charter (Task 2.10)** |  | 23.75d | 2006-12-18 A | 2007-01-22 |  | 31% | 16.33d | 2006-12-18 | 2007-01-03 | 11d | 177.25d |  |  |  | 288h | 40h |
| 187 | 1.1.2.2.4.1 | Developer Draft |  | 10d | 2006-12-18 A | 2007-01-12 |  | 50% | 5d | 2006-12-18 | 2006-12-22 | 5d | 177.25d | 0d | start no earlier than 2006-12-18 | Edmond | 80h | 40h |
| 188 | 1.1.2.2.4.2 | Adopters/Collobators Review |  | 5d | 2007-01-12 | 2007-01-19 | 187 |  |  | 2006-12-26 | 2007-01-02 | 5d | 177.25d | 0d |  | Mayo; WF; AE_SIG; VCDE_WS; Arch_WS | 200h |  |
| 189 | 1.1.2.2.4.3 | Developer Update |  | 1d | 2007-01-19 | 2007-01-22 | 188 |  |  | 2007-01-03 | 2007-01-03 | 1d | 177.25d | 0d |  | Edmond | 8h |  |
| 190 | 1.1.2.2.4.4 | Submit to BAH | milestone | 0d | 2007-01-22 | 2007-01-22 | 189 |  |  | 2007-01-03 | 2007-01-03 | 0d | 177.25d |  |  | Edmond |  |  |
| 191 | 1.1.2.2.5 | **CaAERS CCB (Task 2.10)** |  | 1d | 2007-01-24 | 2007-01-24 |  |  |  | 2007-01-10 | 2007-01-24 | 11d | 175d |  |  |  | 24h |  |
| 192 | 1.1.2.2.5.1 | CCB Meetings |  | 1d | 2007-01-24 | 2007-01-24 |  |  |  | 2007-01-24 | 2007-01-24 | 1d | 175d |  | start no earlier than 2007-01-24 | Edmond; Vinay; CCB | 24h |  |
| 193 | 1.1.2.2.6 | **Weekly Team/Developers Meeting** |  | 16d | 2007-01-08 A | 2007-01-29 |  | 50% | 8d | 2007-01-08 | 2007-01-29 | 16d | 172d |  |  |  | 96h | 48h |
| 194 | 1.1.2.2.6.1 | Weekly Team Meeting 1 |  | 1d | 2007-01-08 A | 2007-01-08 A |  | 100% |  | 2007-01-08 | 2007-01-08 | 1d |  |  | start no earlier than 2007-01-08 | Edmond; Vinay; Functional Team Lead | 24h | 24h |
| 195 | 1.1.2.2.6.2 | Weekly Team Meeting 2 |  | 1d | 2007-01-15 A | 2007-01-15 A |  | 100% |  | 2007-01-15 | 2007-01-15 | 1d |  |  | start no earlier than 2007-01-15 | Edmond; Vinay; Functional Team Lead | 24h | 24h |
| 196 | 1.1.2.2.6.3 | Weekly Team Meeting 3 |  | 1d | 2007-01-22 | 2007-01-22 |  |  |  | 2007-01-22 | 2007-01-22 | 1d | 177d |  | start no earlier than 2007-01-22 | Edmond; Vinay; Functional Team Lead | 24h |  |
| 197 | 1.1.2.2.6.4 | Weekly Team Meeting 4 |  | 1d | 2007-01-29 | 2007-01-29 |  |  |  | 2007-01-29 | 2007-01-29 | 1d | 172d |  | start no earlier than 2007-01-29 | Edmond; Vinay; Functional Team Lead | 24h |  |
| 198 | 1.1.2.2.7 | **Status and Risk Reporting** |  | 14d | 2007-01-12 A | 2007-01-31 |  | 29% | 10d | 2007-01-12 | 2007-01-31 | 14d | 170d |  |  |  | 72h | 16h |
| 199 | 1.1.2.2.7.1 | Bi-weekly Risk Update in caMP (Task 1.4) |  | 1d | 2007-01-12 A | 2007-01-12 A |  | 100% |  | 2007-01-12 | 2007-01-12 | 1d |  |  | start no earlier than 2007-01-12 | Edmond | 8h | 8h |
| 200 | 1.1.2.2.7.2 | Bi-weekly Risk Matrix Update Meeting |  | 1d | 2007-01-12 A | 2007-01-12 A |  | 100% |  | 2007-01-12 | 2007-01-12 | 1d |  |  | start no earlier than 2007-01-12 | Edmond | 8h | 8h |
| 201 | 1.1.2.2.7.3 | Bi-weekly Risk Update in caMP (Task 1.4) |  | 1d | 2007-01-26 | 2007-01-26 |  |  |  | 2007-01-26 | 2007-01-26 | 1d | 173d |  | start no earlier than 2007-01-26 | Edmond | 8h |  |
| 202 | 1.1.2.2.7.4 | Bi-weekly Status Update Meeting with BAH/NCI |  | 1d | 2007-01-26 | 2007-01-26 |  |  |  | 2007-01-26 | 2007-01-26 | 1d | 173d |  | start no earlier than 2007-01-26 | Edmond; Ram; Vinay | 24h |  |
| 203 | 1.1.2.2.7.5 | Monthly Status Report (Task 1.3) |  | 1d | 2007-01-31 | 2007-01-31 |  |  |  | 2007-01-31 | 2007-01-31 | 1d | 170d |  | start no earlier than 2007-01-31 | Edmond | 8h |  |
| 204 | 1.1.2.2.7.6 | Monthly Risk Matrix Update (Task 1.3) |  | 1d | 2007-01-31 | 2007-01-31 |  |  |  | 2007-01-31 | 2007-01-31 | 1d | 170d |  | start no earlier than 2007-01-31 | Edmond | 8h |  |
| 205 | 1.1.2.2.7.7 | Adopters Collaboration Report (Task 1.7) |  | 1d | 2007-01-31 | 2007-01-31 |  |  |  | 2007-01-31 | 2007-01-31 | 1d | 170d |  | start no earlier than 2007-01-31 | Edmond | 8h |  |
| 206 | 1.1.2.2.8 | **Collaboration Management Activities** |  | 11d | 2007-01-11 A | 2007-01-25 |  | 67% | 3.67d | 2007-01-11 | 2007-01-25 | 11d | 174d |  |  |  |  |  |
| 207 | 1.1.2.2.8.1 | Bi-Weekly AE SIG Meeting |  | 1d | 2007-01-11 A | 2007-01-11 A |  | 100% |  | 2007-01-11 | 2007-01-11 | 1d |  |  | start no earlier than 2007-01-11 |  |  |  |
| 208 | 1.1.2.2.8.2 | Adopters Mtg |  | 1d | 2007-01-18 A | 2007-01-18 A |  | 100% |  |  |  |  |  |  | start no earlier than 2007-01-18 |  |  |  |
| 209 | 1.1.2.2.8.3 | Bi-Weekly AE SIG Meeting |  | 1d | 2007-01-25 | 2007-01-25 |  |  |  | 2007-01-25 | 2007-01-25 | 1d | 174d |  | start no earlier than 2007-01-25 |  |  |  |

| ID | WBS | Task | Type | Duration | Start | Finish | Predecessors | Complete | Remaining | Baseline start | Baseline finish | Baseline duration | Total slack | Free slack | Constraint | Resources | Work | Actual work |
| --- | --- | --- | --- | --- | --- | --- | --- | --- | --- | --- | --- | --- | --- | --- | --- | --- | --- | --- |
| 210 | 1.1.2.3 | **Requirements** |  | 17d | 2007-01-02 A | 2007-01-24 |  | 11% | 15.2d | 2007-01-02 | 2007-01-23 | 16d | 175d |  |  |  | 944h | 232h |
| 211 | 1.1.2.3.1 | Face-to-Face Meeting |  | 2d | 2007-01-04 A | 2007-01-05 A |  | 100% |  | 2007-01-04 | 2007-01-05 | 2d |  |  | must start on 2007-01-04 | Ram; Vinay; Warren; Cal; Renee; David; John; Rhett; Joshua | 144h | 144h |
| 212 | 1.1.2.3.2 | F2F Meeting Notes (Task 1.5) |  | 2d | 2007-01-08 A | 2007-01-09 A | 211 | 100% |  | 2007-01-08 | 2007-01-09 | 2d |  |  |  | Edmond | 16h | 16h |
| 213 | 1.1.2.3.3 | Use Case Selection |  | 2d | 2007-01-02 A | 2007-01-03 A |  | 100% |  | 2007-01-02 | 2007-01-03 | 2d |  |  |  | Ram; Vinay; Warren; Cal | 64h | 64h |
| 214 | 1.1.2.3.4 | Use Case Assignments for Iteration 2 |  | 1d | 2007-01-04 A | 2007-01-04 A | 213 | 100% |  | 2007-01-04 | 2007-01-04 | 1d |  |  |  | Vinay | 8h | 8h |
| 215 | 1.1.2.3.5 | **Use Case Specification and Realization (Task 2.1)** |  | 14d | 2007-01-02 | 2007-01-19 |  |  |  | 2007-01-05 | 2007-01-12 | 6d | 178d | 0d |  |  | 576h |  |
| 216 | 1.1.2.3.5.1 | **Protocol Abstraction** |  | 14d | 2007-01-02 | 2007-01-19 |  |  |  |  |  |  | 178d |  |  |  | 192h |  |
| 217 | 1.1.2.3.5.1.1 | Developer draft |  | 5d | 2007-01-02 | 2007-01-08 |  |  |  |  |  |  | 178d | 0d |  | Sean; Krikor | 80h |  |
| 218 | 1.1.2.3.5.1.2 | Adopters/Collobators Review |  | 5d | 2007-01-09 | 2007-01-15 | 217 |  |  |  |  |  | 178d | 0d |  | Mayo; WF | 80h |  |
| 219 | 1.1.2.3.5.1.3 | Developer Update |  | 4d | 2007-01-16 | 2007-01-19 | 218 |  |  |  |  |  | 178d | 0d |  | Sean | 32h |  |
| 220 | 1.1.2.3.5.2 | **AE Data Collection** |  | 14d | 2007-01-02 | 2007-01-19 |  |  |  |  |  |  | 178d |  |  |  | 192h |  |
| 221 | 1.1.2.3.5.2.1 | Developer draft |  | 5d | 2007-01-02 | 2007-01-08 |  |  |  |  |  |  | 178d | 0d |  | Sean; Rhett | 80h |  |
| 222 | 1.1.2.3.5.2.2 | Adopters/Collobators Review |  | 5d | 2007-01-09 | 2007-01-15 | 221 |  |  |  |  |  | 178d | 0d |  | Mayo; WF | 80h |  |
| 223 | 1.1.2.3.5.2.3 | Developer Update |  | 4d | 2007-01-16 | 2007-01-19 | 222 |  |  |  |  |  | 178d | 0d |  | Sean | 32h |  |
| 224 | 1.1.2.3.5.3 | **Triggers/Notification** |  | 14d | 2007-01-02 | 2007-01-19 |  |  |  |  |  |  | 178d |  |  |  | 192h |  |
| 225 | 1.1.2.3.5.3.1 | Developer draft |  | 5d | 2007-01-02 | 2007-01-08 |  |  |  |  |  |  | 178d | 0d |  | Sean; Rhett | 80h |  |
| 226 | 1.1.2.3.5.3.2 | Adopters/Collobators Review |  | 5d | 2007-01-09 | 2007-01-15 | 225 |  |  |  |  |  | 178d | 0d |  | Mayo; WF | 80h |  |
| 227 | 1.1.2.3.5.3.3 | Developer Update |  | 4d | 2007-01-16 | 2007-01-19 | 226 |  |  |  |  |  | 178d | 0d |  | Sean | 32h |  |
| 228 | 1.1.2.3.5.4 | Submit Updated Use Case Document to BAH (Task 2.1) | milestone | 0d | 2007-01-19 | 2007-01-19 | 219, 223, 227 |  |  |  |  |  | 178d |  |  |  |  |  |
| 229 | 1.1.2.3.6 | **SRS document (Task 2.2)** |  | 17d | 2007-01-02 | 2007-01-24 |  |  |  | 2007-01-09 | 2007-01-23 | 11d | 174d | 0d |  |  | 136h |  |
| 230 | 1.1.2.3.6.1 | Developer draft |  | 5d | 2007-01-02 | 2007-01-08 |  |  |  | 2007-01-09 | 2007-01-15 | 5d | 174d | 0d |  | Sean | 40h |  |
| 231 | 1.1.2.3.6.2 | Adopter review |  | 5d | 2007-01-09 | 2007-01-15 | 230 |  |  | 2007-01-16 | 2007-01-22 | 5d | 174d | 0d |  | Sean | 40h |  |
| 232 | 1.1.2.3.6.3 | Developer update |  | 7d | 2007-01-16 | 2007-01-24 | 231 |  |  | 2007-01-23 | 2007-01-23 | 1d | 174d | 0d |  | Sean | 56h |  |
| 233 | 1.1.2.3.6.4 | Deliver SRS document to BAH (Task 2.2) | milestone | 0d | 2007-01-24 | 2007-01-24 | 232 |  |  | 2007-01-23 | 2007-01-23 | 0d | 174d |  |  | Sean |  |  |

| ID | WBS | Task | Type | Duration | Start | Finish | Predecessors | Complete | Remaining | Baseline start | Baseline finish | Baseline duration | Total slack | Free slack | Resources | Work | Actual work |
| --- | --- | --- | --- | --- | --- | --- | --- | --- | --- | --- | --- | --- | --- | --- | --- | --- | --- |
| 234 | 1.1.2.4 | **Analysis and Design** |  | 17d | 2007-01-09 A | 2007-01-31 |  | 40% | 10.25d | 2007-01-12 | 2007-01-26 | 11d | 170d |  |  | 704h | 196h |
| 235 | 1.1.2.4.1 | **Design Documents** |  | 13d | 2007-01-09 A | 2007-01-25 | 215SS+5d | 51% | 6.33d | 2007-01-12 | 2007-01-23 | 8d | 174d |  |  | 312h | 160h |
| 236 | 1.1.2.4.1.1 | **Protocol Abstraction** |  | 13d | 2007-01-09 A | 2007-01-25 |  | 58% | 5.5d |  |  |  | 174d | 0d |  | 104h | 60h |
| 237 | 1.1.2.4.1.1.1 | Develop appropriate UML Artifacts |  | 5d | 2007-01-09 A | 2007-01-15 |  | 75% | 1.25d |  |  |  | 177.75d | 0d | Krikor | 40h | 30h |
| 238 | 1.1.2.4.1.1.2 | Create Design Document |  | 5d | 2007-01-16 A | 2007-01-22 | 237 | 75% | 1.25d |  |  |  | 174d | 0d | Krikor | 40h | 30h |
| 239 | 1.1.2.4.1.1.3 | Adopters/Collaborators Review |  | 2d | 2007-01-23 | 2007-01-24 | 238 |  |  |  |  |  | 174d | 0d | Krikor | 16h |  |
| 240 | 1.1.2.4.1.1.4 | Developers Update |  | 1d | 2007-01-25 | 2007-01-25 | 239 |  |  |  |  |  | 174d | 0d | Krikor | 8h |  |
| 241 | 1.1.2.4.1.2 | **AE Data Collection** |  | 13d | 2007-01-09 A | 2007-01-25 |  | 58% | 5.5d |  |  |  | 174d | 0d |  | 104h | 60h |
| 242 | 1.1.2.4.1.2.1 | Develop appropriate UML Artifacts |  | 5d | 2007-01-09 A | 2007-01-15 |  | 75% | 1.25d |  |  |  | 177.75d | 0d | Rhett | 40h | 30h |
| 243 | 1.1.2.4.1.2.2 | Create Design Document |  | 5d | 2007-01-16 A | 2007-01-22 | 242 | 75% | 1.25d |  |  |  | 174d | 0d | Rhett | 40h | 30h |
| 244 | 1.1.2.4.1.2.3 | Adopters/Collaborators Review |  | 2d | 2007-01-23 | 2007-01-24 | 243 |  |  |  |  |  | 174d | 0d | Rhett | 16h |  |
| 245 | 1.1.2.4.1.2.4 | Developers Update |  | 1d | 2007-01-25 | 2007-01-25 | 244 |  |  |  |  |  | 174d | 0d | Rhett | 8h |  |
| 246 | 1.1.2.4.1.3 | **Triggers/Notification** |  | 13d | 2007-01-09 A | 2007-01-25 |  | 38% | 8d |  |  |  | 174d | 0d |  | 104h | 40h |
| 247 | 1.1.2.4.1.3.1 | Develop appropriate UML Artifacts |  | 5d | 2007-01-09 A | 2007-01-15 |  | 50% | 2.5d |  |  |  | 176.5d | 0d | Sujith | 40h | 20h |
| 248 | 1.1.2.4.1.3.2 | Create Design Document |  | 5d | 2007-01-16 A | 2007-01-22 | 247 | 50% | 2.5d |  |  |  | 174d | 0d | Sujith | 40h | 20h |
| 249 | 1.1.2.4.1.3.3 | Adopters/Collaborators Review |  | 2d | 2007-01-23 | 2007-01-24 | 248 |  |  |  |  |  | 174d | 0d | Sujith | 16h |  |
| 250 | 1.1.2.4.1.3.4 | Developers Update |  | 1d | 2007-01-25 | 2007-01-25 | 249 |  |  |  |  |  | 174d | 0d | Sujith | 8h |  |
| 251 | 1.1.2.4.1.4 | Deliver Design document to BAH (Task 2.2) | milestone | 0d | 2007-01-25 | 2007-01-25 | 240, 245, 250 |  |  | 2007-01-23 | 2007-01-23 | 0d | 174d |  | Edmond |  |  |
| 252 | 1.1.2.4.1.5 | Deliver UML to BAH (Task 2.3) | milestone | 0d | 2007-01-25 | 2007-01-25 | 240, 245, 250 |  |  |  |  |  | 174d |  | Edmond |  |  |
| 253 | 1.1.2.4.2 | **Technical/Architecture Guide** |  | 17d | 2007-01-09 A | 2007-01-31 |  | 13% | 14.75d | 2007-01-12 | 2007-01-26 | 11d | 170d |  |  | 392h | 36h |
| 254 | 1.1.2.4.2.1 | Developer draft |  | 9d | 2007-01-09 A | 2007-01-19 | 215SS+5d | 25% | 6.75d | 2007-01-12 | 2007-01-18 | 5d | 170d | 0d | Vinay; Joshua | 144h | 36h |
| 255 | 1.1.2.4.2.2 | Adopter review |  | 5d | 2007-01-22 | 2007-01-26 | 254 |  |  | 2007-01-19 | 2007-01-25 | 5d | 170d | 0d | Mayo; WF; AE_SIG; VCDE_WS; Arch_WS | 200h |  |
| 256 | 1.1.2.4.2.3 | Developer update |  | 3d | 2007-01-29 | 2007-01-31 | 255 |  |  | 2007-01-26 | 2007-01-26 | 1d | 170d | 0d | Vinay; Joshua | 48h |  |
| 257 | 1.1.2.4.2.4 | Deliver to BAH (Task 2.8) | milestone | 0d | 2007-01-31 | 2007-01-31 | 256 |  |  | 2007-01-26 | 2007-01-26 | 0d | 170d |  | Edmond |  |  |

| ID | WBS | Task | Duration | Start | Finish | Predecessors | Complete | Remaining | Baseline start | Baseline finish | Baseline duration | Total slack | Free slack | Resources | Work | Actual work |
| --- | --- | --- | --- | --- | --- | --- | --- | --- | --- | --- | --- | --- | --- | --- | --- | --- |
| 258 | 1.1.2.5 | **Implementation** | 19d? | 2007-01-03 A | 2007-01-29 | 215SS+1d | 79% | 3.98d? | 2007-01-08 | 2007-01-24 | 13d | 170d | 0d |  | 440h | 440h |
| 259 | 1.1.2.5.1 | **Web interface** | 9d | 2007-01-03 A | 2007-01-15 A |  | 100% |  | 2007-01-08 | 2007-01-19 | 10d |  |  |  | 72h | 72h |
| 260 | 1.1.2.5.1.1 | Second web interface iteration | 9d | 2007-01-03 A | 2007-01-15 A |  | 100% |  | 2007-01-08 | 2007-01-19 | 10d |  |  | Richard | 72h | 72h |
| 261 | 1.1.2.5.2 | **Enterprise Service Bus** | 10d | 2007-01-03 A | 2007-01-16 A |  | 100% |  | 2007-01-08 | 2007-01-19 | 10d |  |  |  | 160h | 160h |
| 262 | 1.1.2.5.2.1 | Second ESB Iteration | 10d | 2007-01-03 A | 2007-01-16 A |  | 100% |  | 2007-01-08 | 2007-01-19 | 10d |  |  | Vinay; Joshua | 160h | 160h |
| 263 | 1.1.2.5.3 | **Grid service** | 13d | 2007-01-03 A | 2007-01-19 A |  | 100% |  | 2007-01-08 | 2007-01-24 | 13d |  |  |  | 208h | 208h |
| 264 | 1.1.2.5.3.1 | Implement Grid Service | 13d | 2007-01-03 A | 2007-01-19 A |  | 100% |  | 2007-01-08 | 2007-01-24 | 13d |  |  | Vinay; Joshua | 208h | 208h |
| 265 | 1.1.2.5.4 | **Implement Use Cases** | 15d? | 2007-01-09 A | 2007-01-29 |  | 70% | 4.52d? | 2007-01-08 | 2007-01-23 | 12d | 170d |  |  |  |  |
| 266 | 1.1.2.5.4.1 | **Protocol Abstraction** | 12d | 2007-01-09 A | 2007-01-24 | 236SS | 75% | 3d |  |  |  | 173d |  |  |  |  |
| 267 | 1.1.2.5.4.1.1 | UI - Incorporate HTML and CSS | 5d | 2007-01-16 A | 2007-01-22 | 260 | 75% | 1.25d |  |  |  | 175d |  |  |  |  |
| 268 | 1.1.2.5.4.1.2 | Implement O/R mapping | 10d | 2007-01-09 A | 2007-01-22 |  | 75% | 2.5d | 2007-01-08 | 2007-01-19 | 10d | 175d | 0d |  |  |  |
| 269 | 1.1.2.5.4.1.3 | Develop DAO | 10d | 2007-01-11 A | 2007-01-24 | 268SS+2d | 75% | 2.5d | 2007-01-10 | 2007-01-23 | 10d | 173d |  |  |  |  |
| 270 | 1.1.2.5.4.1.4 | Develop Service | 10d | 2007-01-11 A | 2007-01-24 | 268SS+2d | 75% | 2.5d | 2007-01-10 | 2007-01-23 | 10d | 173d |  |  |  |  |
| 271 | 1.1.2.5.4.1.5 | Develop controller and command objects | 10d | 2007-01-11 A | 2007-01-24 | 268SS+2d | 75% | 2.5d | 2007-01-10 | 2007-01-23 | 10d | 173d |  |  |  |  |
| 272 | 1.1.2.5.4.1.6 | Develop JUnit test cases | 7d | 2007-01-11 A | 2007-01-19 | 268SS+2d | 75% | 1.75d | 2007-01-10 | 2007-01-18 | 7d | 176d |  |  |  |  |
| 273 | 1.1.2.5.4.2 | **AE Data Collection** | 6d? | 2007-01-09 A | 2007-01-16 | 241SS | 75% | 1.5d? |  |  |  | 179d |  |  |  |  |
| 274 | 1.1.2.5.4.2.1 | UI - Incorporate HTML and CSS | 1d? | 2007-01-16 A | 2007-01-16 | 260 | 75% | 0.25d? |  |  |  | 179d |  |  |  |  |
| 275 | 1.1.2.5.4.2.2 | Implement O/R mapping | 1d? | 2007-01-09 A | 2007-01-09 |  | 75% | 0.25d? |  |  |  | 184d |  |  |  |  |
| 276 | 1.1.2.5.4.2.3 | Develop DAO | 1d? | 2007-01-09 A | 2007-01-09 |  | 75% | 0.25d? |  |  |  | 184d |  |  |  |  |
| 277 | 1.1.2.5.4.2.4 | Develop Service | 1d? | 2007-01-09 A | 2007-01-09 |  | 75% | 0.25d? |  |  |  | 184d |  |  |  |  |
| 278 | 1.1.2.5.4.2.5 | Develop controller and command objects | 1d? | 2007-01-09 A | 2007-01-09 |  | 75% | 0.25d? |  |  |  | 184d |  |  |  |  |
| 279 | 1.1.2.5.4.2.6 | Develop JUnit test cases | 1d? | 2007-01-09 A | 2007-01-09 |  | 75% | 0.25d? |  |  |  | 184d |  |  |  |  |
| 280 | 1.1.2.5.4.3 | **Triggers/Notification** | 15d | 2007-01-09 A | 2007-01-29 | 246SS | 50% | 7.5d |  |  |  | 170d |  |  |  |  |
| 281 | 1.1.2.5.4.3.1 | JBOSS Rules Setup/Development | 15d | 2007-01-09 A | 2007-01-29 |  | 50% | 7.5d |  |  |  | 170d |  |  |  |  |

| ID | WBS | Task | Type | Duration | Start | Finish | Predecessors | Baseline start | Baseline finish | Baseline duration | Total slack | Free slack | Constraint | Resources | Work |
| --- | --- | --- | --- | --- | --- | --- | --- | --- | --- | --- | --- | --- | --- | --- | --- |
| 282 | 1.1.2.6 | **Testing** |  | 17d | 2007-01-09 | 2007-01-31 |  | 2007-01-12 | 2007-01-26 | 11d | 170d |  |  |  | 232h |
| 283 | 1.1.2.6.1 | **Create Functional Tests** |  | 13d | 2007-01-09 | 2007-01-25 | 215SS+5d | 2007-01-12 | 2007-01-24 | 9d | 174d |  |  |  | 168h |
| 284 | 1.1.2.6.1.1 | Create Functional Tests for Use Cases |  | 5d | 2007-01-09 | 2007-01-15 |  | 2007-01-12 | 2007-01-18 | 5d | 181d | 7d |  | Renee; David; Brenda; Natasha | 160h |
| 285 | 1.1.2.6.1.2 | RTM |  | 1d | 2007-01-25 | 2007-01-25 | 284, 229 | 2007-01-24 | 2007-01-24 | 1d | 174d |  |  | John | 8h |
| 286 | 1.1.2.6.2 | **Final Tests of Iteration** |  | 2d | 2007-01-29 | 2007-01-31 |  | 2007-01-24 | 2007-01-26 | 2d | 170d |  |  |  | 64h |
| 287 | 1.1.2.6.2.1 | Deploy Prototype for Iteration 2 (Task 2.5) | milestone | 0d | 2007-01-29 | 2007-01-29 | 258 | 2007-01-24 | 2007-01-24 | 0d | 170d | 0d |  | Vinay; Joshua; Rhett |  |
| 288 | 1.1.2.6.2.2 | Validation and Acceptance Testing |  | 2d | 2007-01-30 | 2007-01-31 | 287 | 2007-01-25 | 2007-01-26 | 2d | 170d | 0d |  | Renee; David; Brenda; Natasha | 64h |
| 289 | 1.1.2.6.2.3 | Submit Test Results Report (Task 2.7) | milestone | 0d | 2007-01-31 | 2007-01-31 | 288 | 2007-01-26 | 2007-01-26 | 0d | 170d |  |  |  |  |
| 290 | 1.2 | **Construction Phase** |  | 160d | 2007-02-01 | 2007-09-12 |  | 2007-02-01 | 2007-09-12 | 160d | 0d |  |  |  |  |
| 291 | 1.2.1 | **Construction Phase Iteration 1** |  | 22d | 2007-02-01 | 2007-03-02 |  | 2007-02-01 | 2007-03-02 | 22d | 0d |  | start no earlier than 2007-02-01 |  |  |
| 292 | 1.2.1.1 | Begin Iteration 1 | milestone | 0d | 2007-02-01 | 2007-02-01 |  | 2007-02-01 | 2007-02-01 | 0d | 0d |  |  |  |  |
| 293 | 1.2.1.2 | Environment Updates |  | 15d | 2007-02-01 | 2007-02-21 |  | 2007-02-01 | 2007-02-21 | 15d | 155d |  |  |  |  |
| 294 | 1.2.1.3 | Updates to Requirements, Use Case, UML, and Design Document |  | 20d | 2007-02-01 | 2007-02-28 |  | 2007-02-01 | 2007-02-28 | 20d | 150d |  |  |  |  |
| 295 | 1.2.1.4 | Test Plan and RTM Updates |  | 15d | 2007-02-01 | 2007-02-21 |  | 2007-02-01 | 2007-02-21 | 15d | 150d | 0d |  |  |  |
| 296 | 1.2.1.5 | Develop Code |  | 20d | 2007-02-01 | 2007-02-28 |  | 2007-02-01 | 2007-02-28 | 20d | 150d |  |  |  |  |
| 297 | 1.2.1.6 | Testing |  | 20d | 2007-02-01 | 2007-02-28 |  | 2007-02-01 | 2007-02-28 | 20d | 150d |  |  |  |  |
| 298 | 1.2.1.7 | Installation Guide Draft |  | 5d | 2007-02-22 | 2007-02-28 | 301FS-5d | 2007-02-22 | 2007-02-28 | 5d | 150d |  |  |  |  |
| 299 | 1.2.1.8 | Testing Results |  | 5d | 2007-02-22 | 2007-02-28 | 295 | 2007-02-22 | 2007-02-28 | 5d | 150d |  |  |  |  |
| 300 | 1.2.1.9 | Adopters Collaboration Report (Task 1.7) | milestone | 0d | 2007-02-28 | 2007-02-28 |  | 2006-12-29 | 2006-12-29 | 0d | 0d |  | must finish on 2007-02-28 | Edmond; Warren; Cal; Renee |  |
| 301 | 1.2.1.10 | Finish Iteration 1 | milestone | 0d | 2007-02-28 | 2007-02-28 | 292FS+20d | 2007-02-28 | 2007-02-28 | 0d | 0d |  |  |  |  |
| 302 | 1.2.1.11 | Iteration 1 Review and Feedback |  | 5d | 2007-02-26 | 2007-03-02 | 301FS-3d | 2007-02-26 | 2007-03-02 | 5d | 0d |  |  |  |  |
| 303 | 1.2.2 | **Construction Phase Iteration 2** |  | 23d | 2007-03-02 | 2007-04-04 | 302 | 2007-03-02 | 2007-04-04 | 23d | 0d |  |  |  |  |
| 304 | 1.2.2.1 | Begin Iteration 2 | milestone | 0d | 2007-03-02 | 2007-03-02 |  | 2007-03-02 | 2007-03-02 | 0d | 0d |  |  |  |  |
| 305 | 1.2.2.2 | Environment Updates |  | 10d | 2007-03-05 | 2007-03-16 |  | 2007-03-05 | 2007-03-16 | 10d | 138d |  |  |  |  |
| 306 | 1.2.2.3 | Updates to Requirements, Use Case, UML, and Design Document |  | 20d | 2007-03-05 | 2007-03-30 |  | 2007-03-05 | 2007-03-30 | 20d | 128d |  |  |  |  |
| 307 | 1.2.2.4 | Test Plan and RTM Updates |  | 15d | 2007-03-05 | 2007-03-23 |  | 2007-03-05 | 2007-03-23 | 15d | 133d |  |  |  |  |
| 308 | 1.2.2.5 | Develop Code |  | 20d | 2007-03-05 | 2007-03-30 |  | 2007-03-05 | 2007-03-30 | 20d | 128d |  |  |  |  |
| 309 | 1.2.2.6 | Testing |  | 20d | 2007-03-05 | 2007-03-30 |  | 2007-03-05 | 2007-03-30 | 20d | 128d | 0d |  |  |  |
| 310 | 1.2.2.7 | Testing Results |  | 5d | 2007-03-26 | 2007-03-30 | 309FS-5d | 2007-03-26 | 2007-03-30 | 5d | 128d |  |  |  |  |
| 311 | 1.2.2.8 | Installation Guide Drafts |  | 5d | 2007-03-26 | 2007-03-30 | 312FS-5d | 2007-03-26 | 2007-03-30 | 5d | 128d |  |  |  |  |
| 312 | 1.2.2.9 | Finish Iteration 2 | milestone | 0d | 2007-03-30 | 2007-03-30 | 304FS+20d | 2007-03-30 | 2007-03-30 | 0d | 0d |  |  |  |  |
| 313 | 1.2.2.10 | Iteration 2 Review and Feedback |  | 5d | 2007-03-29 | 2007-04-04 | 312FS-2d | 2007-03-29 | 2007-04-04 | 5d | 0d |  |  |  |  |

| ID | WBS | Task | Type | Duration | Start | Finish | Predecessors | Baseline start | Baseline finish | Baseline duration | Total slack |
| --- | --- | --- | --- | --- | --- | --- | --- | --- | --- | --- | --- |
| 314 | 1.2.3 | **Construction Phase Iteration 3** |  | 23d | 2007-04-04 | 2007-05-07 | 313 | 2007-04-04 | 2007-05-07 | 23d | 0d |
| 315 | 1.2.3.1 | Begin Iteration 3 | milestone | 0d | 2007-04-04 | 2007-04-04 |  | 2007-04-04 | 2007-04-04 | 0d | 0d |
| 316 | 1.2.3.2 | Environment Updates |  | 10d | 2007-04-05 | 2007-04-18 |  | 2007-04-05 | 2007-04-18 | 10d | 115d |
| 317 | 1.2.3.3 | Updates to Requirements, Use Case, UML, and Design Document |  | 20d | 2007-04-05 | 2007-05-02 |  | 2007-04-05 | 2007-05-02 | 20d | 105d |
| 318 | 1.2.3.4 | Test Plan and RTM Updates |  | 15d | 2007-04-05 | 2007-04-25 |  | 2007-04-05 | 2007-04-25 | 15d | 110d |
| 319 | 1.2.3.5 | Develop Code |  | 20d | 2007-04-05 | 2007-05-02 |  | 2007-04-05 | 2007-05-02 | 20d | 105d |
| 320 | 1.2.3.6 | Testing |  | 20d | 2007-04-05 | 2007-05-02 |  | 2007-04-05 | 2007-05-02 | 20d | 105d |
| 321 | 1.2.3.7 | Installation Guide Drafts |  | 5d | 2007-04-26 | 2007-05-02 | 322FS-5d | 2007-04-26 | 2007-05-02 | 5d | 105d |
| 322 | 1.2.3.8 | Finish Iteration 3 | milestone | 0d | 2007-05-02 | 2007-05-02 | 315FS+20d | 2007-05-02 | 2007-05-02 | 0d | 0d |
| 323 | 1.2.3.9 | Iteration 3 Review and Feedback |  | 5d | 2007-05-01 | 2007-05-07 | 322FS-2d | 2007-05-01 | 2007-05-07 | 5d | 0d |
| 324 | 1.2.4 | **Construction Phase Iteration 4** |  | 23d | 2007-05-07 | 2007-06-07 | 323 | 2007-05-07 | 2007-06-07 | 23d | 0d |
| 325 | 1.2.4.1 | Begin Iteration 4 | milestone | 0d | 2007-05-07 | 2007-05-07 |  | 2007-05-07 | 2007-05-07 | 0d | 0d |
| 326 | 1.2.4.2 | Environment Updates |  | 10d | 2007-05-08 | 2007-05-21 |  | 2007-05-08 | 2007-05-21 | 10d | 92d |
| 327 | 1.2.4.3 | Updates to Requirements, Use Case, UML, and Design Document |  | 20d | 2007-05-08 | 2007-06-04 |  | 2007-05-08 | 2007-06-04 | 20d | 82d |
| 328 | 1.2.4.4 | Test Plan and RTM Updates |  | 15d | 2007-05-08 | 2007-05-28 |  | 2007-05-08 | 2007-05-28 | 15d | 87d |
| 329 | 1.2.4.5 | Develop Code |  | 20d | 2007-05-08 | 2007-06-04 |  | 2007-05-08 | 2007-06-04 | 20d | 82d |
| 330 | 1.2.4.6 | Testing |  | 20d | 2007-05-08 | 2007-06-04 |  | 2007-05-08 | 2007-06-04 | 20d | 82d |
| 331 | 1.2.4.7 | Installation Guide Draft |  | 5d | 2007-05-29 | 2007-06-04 | 334FS-5d | 2007-05-29 | 2007-06-04 | 5d | 82d |
| 332 | 1.2.4.8 | Administrators Guide Draft |  | 5d | 2007-05-29 | 2007-06-04 | 334FS-5d | 2007-05-29 | 2007-06-04 | 5d | 82d |
| 333 | 1.2.4.9 | End User Guide Draft |  | 5d | 2007-05-29 | 2007-06-04 | 334FS-5d | 2007-05-29 | 2007-06-04 | 5d | 82d |
| 334 | 1.2.4.10 | Finish Iteration 4 | milestone | 0d | 2007-06-04 | 2007-06-04 | 325FS+20d | 2007-06-04 | 2007-06-04 | 0d | 0d |
| 335 | 1.2.4.11 | Iteration 4 Review and Feedback |  | 5d | 2007-06-01 | 2007-06-07 | 334FS-2d | 2007-06-01 | 2007-06-07 | 5d | 0d |
| 336 | 1.2.5 | **Construction Phase Iteration 5** |  | 23d | 2007-06-07 | 2007-07-10 | 335 | 2007-06-07 | 2007-07-10 | 23d | 0d |
| 337 | 1.2.5.1 | Begin Iteration 5 | milestone | 0d | 2007-06-07 | 2007-06-07 |  | 2007-06-07 | 2007-06-07 | 0d | 0d |
| 338 | 1.2.5.2 | Environment Updates |  | 10d | 2007-06-08 | 2007-06-21 |  | 2007-06-08 | 2007-06-21 | 10d | 69d |
| 339 | 1.2.5.3 | Updates to Requirements, Use Case, UML, and Design Document |  | 20d | 2007-06-08 | 2007-07-05 |  | 2007-06-08 | 2007-07-05 | 20d | 59d |
| 340 | 1.2.5.4 | Test Plan and RTM Updates |  | 15d | 2007-06-08 | 2007-06-28 |  | 2007-06-08 | 2007-06-28 | 15d | 64d |
| 341 | 1.2.5.5 | Develop Code |  | 20d | 2007-06-08 | 2007-07-05 |  | 2007-06-08 | 2007-07-05 | 20d | 59d |
| 342 | 1.2.5.6 | Testing |  | 20d | 2007-06-08 | 2007-07-05 |  | 2007-06-08 | 2007-07-05 | 20d | 59d |
| 343 | 1.2.5.7 | Testing Results |  | 5d | 2007-06-29 | 2007-07-05 | 347FS-5d | 2007-06-29 | 2007-07-05 | 5d | 59d |
| 344 | 1.2.5.8 | Installation Guide Draft |  | 5d | 2007-06-29 | 2007-07-05 | 347FS-5d | 2007-06-29 | 2007-07-05 | 5d | 59d |
| 345 | 1.2.5.9 | Administrators Guide Draft |  | 5d | 2007-06-29 | 2007-07-05 | 347FS-5d | 2007-06-29 | 2007-07-05 | 5d | 59d |
| 346 | 1.2.5.10 | End User Guide Draft |  | 5d | 2007-06-08 | 2007-06-14 |  | 2007-06-08 | 2007-06-14 | 5d | 74d |
| 347 | 1.2.5.11 | Finish Iteration 5 | milestone | 0d | 2007-07-05 | 2007-07-05 | 337FS+20d | 2007-07-05 | 2007-07-05 | 0d | 0d |
| 348 | 1.2.5.12 | Iteration 5 Review and Feedback |  | 5d | 2007-07-04 | 2007-07-10 | 347FS-2d | 2007-07-04 | 2007-07-10 | 5d | 0d |

| ID | WBS | Task | Type | Duration | Start | Finish | Predecessors | Baseline start | Baseline finish | Baseline duration | Total slack | Free slack |
| --- | --- | --- | --- | --- | --- | --- | --- | --- | --- | --- | --- | --- |
| 349 | 1.2.6 | **Construction Phase Iteration 6** |  | 23d | 2007-07-10 | 2007-08-10 | 348 | 2007-07-10 | 2007-08-10 | 23d | 0d |  |
| 350 | 1.2.6.1 | Begin Iteration 6 | milestone | 0d | 2007-07-10 | 2007-07-10 |  | 2007-07-10 | 2007-07-10 | 0d | 0d |  |
| 351 | 1.2.6.2 | Environment Updates |  | 10d | 2007-07-11 | 2007-07-24 |  | 2007-07-11 | 2007-07-24 | 10d | 46d |  |
| 352 | 1.2.6.3 | Updates to Requirements, Use Case, UML, and Design Document |  | 20d | 2007-07-11 | 2007-08-07 |  | 2007-07-11 | 2007-08-07 | 20d | 36d |  |
| 353 | 1.2.6.4 | Test Plan and RTM Updates |  | 15d | 2007-07-11 | 2007-07-31 |  | 2007-07-11 | 2007-07-31 | 15d | 41d |  |
| 354 | 1.2.6.5 | Develop Code |  | 20d | 2007-07-11 | 2007-08-07 |  | 2007-07-11 | 2007-08-07 | 20d | 36d |  |
| 355 | 1.2.6.6 | Installation Guide Draft |  | 5d | 2007-08-01 | 2007-08-07 | 360FS-5d | 2007-08-01 | 2007-08-07 | 5d | 36d |  |
| 356 | 1.2.6.7 | Administrators Guide Draft |  | 5d | 2007-08-01 | 2007-08-07 | 360FS-5d | 2007-08-01 | 2007-08-07 | 5d | 36d |  |
| 357 | 1.2.6.8 | End User Guide Draft |  | 5d | 2007-08-01 | 2007-08-07 | 360FS-5d | 2007-08-01 | 2007-08-07 | 5d | 36d |  |
| 358 | 1.2.6.9 | Testing |  | 20d | 2007-07-11 | 2007-08-07 |  | 2007-07-11 | 2007-08-07 | 20d | 36d | 0d |
| 359 | 1.2.6.10 | Testing Results |  | 5d | 2007-08-01 | 2007-08-07 | 358FS-5d | 2007-08-01 | 2007-08-07 | 5d | 36d |  |
| 360 | 1.2.6.11 | Finish Iteration 6 | milestone | 0d | 2007-08-07 | 2007-08-07 | 350FS+20d | 2007-08-07 | 2007-08-07 | 0d | 0d |  |
| 361 | 1.2.6.12 | Iteration 6 Review and Feedback |  | 5d | 2007-08-06 | 2007-08-10 | 360FS-2d | 2007-08-06 | 2007-08-10 | 5d | 0d |  |
| 362 | 1.2.7 | **Construction Phase Iteration 7** |  | 23d | 2007-08-10 | 2007-09-12 | 361 | 2007-08-10 | 2007-09-12 | 23d | 0d |  |
| 363 | 1.2.7.1 | Begin Iteration 7 | milestone | 0d | 2007-08-10 | 2007-08-10 |  | 2007-08-10 | 2007-08-10 | 0d | 0d |  |
| 364 | 1.2.7.2 | Environment Updates |  | 10d | 2007-08-13 | 2007-08-24 |  | 2007-08-13 | 2007-08-24 | 10d | 23d |  |
| 365 | 1.2.7.3 | Finalize Requirements, Use Case, UML, and Design Document |  | 10d | 2007-08-13 | 2007-08-24 |  | 2007-08-13 | 2007-08-24 | 10d | 13d | 0d |
| 366 | 1.2.7.4 | Test Plan and RTM Updates (Task 3.6) |  | 15d | 2007-08-13 | 2007-08-31 |  | 2007-08-13 | 2007-08-31 | 15d | 18d |  |
| 367 | 1.2.7.5 | Finalize Code Base (Task 3.5) |  | 20d | 2007-08-13 | 2007-09-07 |  | 2007-08-13 | 2007-09-07 | 20d | 13d |  |
| 368 | 1.2.7.6 | Testing |  | 20d | 2007-08-13 | 2007-09-07 |  | 2007-08-13 | 2007-09-07 | 20d | 13d |  |
| 369 | 1.2.7.7 | Final Test Results Report (3.8) |  | 5d | 2007-09-03 | 2007-09-07 | 377FS-5d | 2007-09-03 | 2007-09-07 | 5d | 13d |  |
| 370 | 1.2.7.8 | Final Transition Phase Plan (3.16) |  | 5d | 2007-09-03 | 2007-09-07 | 377FS-5d | 2007-09-03 | 2007-09-07 | 5d | 13d |  |
| 371 | 1.2.7.9 | Compatibility Review Submission Package (Task 3.12) |  | 10d | 2007-08-27 | 2007-09-07 | 377FS-10d | 2007-08-27 | 2007-09-07 | 10d | 13d |  |
| 372 | 1.2.7.10 | Generation of CDEs (Task 3.11.2) |  | 10d | 2007-08-27 | 2007-09-07 | 365 | 2007-08-27 | 2007-09-07 | 10d | 13d |  |
| 373 | 1.2.7.11 | Final Administrators Guide (Task 3.13) |  | 5d | 2007-09-03 | 2007-09-07 | 377FS-5d | 2007-09-03 | 2007-09-07 | 5d | 13d |  |
| 374 | 1.2.7.12 | Final End Users Guide (Task 3.15.2) |  | 5d | 2007-09-03 | 2007-09-07 | 377FS-5d | 2007-09-03 | 2007-09-07 | 5d | 13d |  |
| 375 | 1.2.7.13 | Final Installation Guide (Task 3.10) |  | 5d | 2007-09-03 | 2007-09-07 | 377FS-5d | 2007-09-03 | 2007-09-07 | 5d | 13d |  |
| 376 | 1.2.7.14 | Release Notes (Task 3.14) |  | 5d | 2007-09-03 | 2007-09-07 | 377FS-5d | 2007-09-03 | 2007-09-07 | 5d | 13d |  |
| 377 | 1.2.7.15 | Finish Iteration 7 | milestone | 0d | 2007-09-07 | 2007-09-07 | 363FS+20d | 2007-09-07 | 2007-09-07 | 0d | 0d |  |
| 378 | 1.2.7.16 | Iteration 7 Review and Feedback |  | 5d | 2007-09-06 | 2007-09-12 | 377FS-2d | 2007-09-06 | 2007-09-12 | 5d | 0d |  |
| 379 | 1.2.8 | Transition Phase Go/No-Go Gate | milestone | 0d | 2007-09-12 | 2007-09-12 | 378 | 2007-09-12 | 2007-09-12 | 0d | 0d |  |

| ID | WBS | Task | Duration | Start | Finish | Predecessors | Baseline start | Baseline finish | Baseline duration | Total slack | Free slack |
| --- | --- | --- | --- | --- | --- | --- | --- | --- | --- | --- | --- |
| 380 | 1.3 | **Transition Phase** | 10d | 2007-09-13 | 2007-09-26 | 379 | 2007-09-13 | 2007-09-26 | 10d | 0d |  |
| 381 | 1.3.1 | Deployment Plan (Task 4.1) | 2d | 2007-09-13 | 2007-09-14 |  | 2007-09-13 | 2007-09-14 | 2d | 3d | 0d |
| 382 | 1.3.2 | Deployment | 5d | 2007-09-17 | 2007-09-21 | 381 | 2007-09-17 | 2007-09-21 | 5d | 3d |  |
| 383 | 1.3.3 | Deployment Report (Task 4.2) | 1d | 2007-09-13 | 2007-09-13 |  | 2007-09-13 | 2007-09-13 | 1d | 9d |  |
| 384 | 1.3.4 | Code Release Updates (if needed) (Task 4.3) | 10d | 2007-09-13 | 2007-09-26 |  | 2007-09-13 | 2007-09-26 | 10d | 0d |  |
| 385 | 1.3.5 | Guide Updates (if needed) | 10d | 2007-09-13 | 2007-09-26 |  | 2007-09-13 | 2007-09-26 | 10d | 0d |  |
| 386 | 1.3.6 | **Project Closing Activities** | 10d | 2007-09-13 | 2007-09-26 |  | 2007-09-13 | 2007-09-26 | 10d | 0d |  |
| 387 | 1.3.6.1 | Lessons Learned (Task 1.6) | 10d | 2007-09-13 | 2007-09-26 |  | 2007-09-13 | 2007-09-26 | 10d | 0d |  |
| 388 | 1.3.6.2 | Archiving | 10d | 2007-09-13 | 2007-09-26 |  | 2007-09-13 | 2007-09-26 | 10d | 0d |  |
| 389 | 1.3.6.3 | Contract Closeout | 10d | 2007-09-13 | 2007-09-26 |  | 2007-09-13 | 2007-09-26 | 10d | 0d |  |
